Schedule from GanttProject, 2011-01-18 to 2011-04-14.

## Calendars

- Project calendar: Mon-Fri working; Sat-Sun off.

## Resources

| Resource |
| --- |
| Dave |
| Baobab Dev |
| James |

## Schedule

| ID | WBS | Task | Type | Duration | Start | Finish | Predecessors |
| --- | --- | --- | --- | --- | --- | --- | --- |
| 1 | 1 | **SCOPING** |  | 12d | 2011-01-18 | 2011-02-02 |  |
| 2 | 1.1 | SCOPING: early requirements phase completed |  | 10d | 2011-01-18 | 2011-01-31 |  |
| 3 | 1.2 | SCOPING: Hotline patient registration working with placeholder screens for remainder features |  | 5d | 2011-01-26 | 2011-02-01 |  |
| 4 | 1.3 | SCOPING: Finalize physical architecture – comm strategy |  | 6d | 2011-01-24 | 2011-01-31 |  |
| 5 | 1.4 | SCOPING: Motech decision (use it or code our own) |  | 1d | 2011-01-25 | 2011-01-25 |  |
| 6 | 1.5 | SCOPING: Concepts & data model use determined (draft – defined) |  | 3d | 2011-01-31 | 2011-02-02 |  |
| 7 | 1.6 | SCOPING: Notifier two-way to HUB API is designed in a good draft form |  | 4d | 2011-01-28 | 2011-02-02 |  |
| 8 | 2 | **COMMUNICATIONS INFRASTRUCTURE/TELECOM/MESSAGE HUB** |  | 35d | 2011-01-24 | 2011-03-11 |  |
| 9 | 2.1 | COM: IntellIVR proposal and contract |  | 8d | 2011-01-27 | 2011-02-07 |  |
| 10 | 2.2 | COM: IntellIVR in a dev mode with a sample config is installed at BHT (lamp stack, no telco connection yet, but with dummy xml interface to verify API) |  | 1d | 2011-02-08 | 2011-02-08 | 4, 9 |
| 11 | 2.3 | COM: SMS Solution defined and designed |  | 1d | 2011-02-01 | 2011-02-01 | 4 |
| 12 | 2.4 | COM: Working message hub (in dev) and sending to API XML |  | 20d | 2011-02-09 | 2011-03-08 | 10 |
| 13 | 2.5 | COM: Communications Hub is operational in “test mode” (testable SMS, Out-calls, but independent of DH server) |  | 1d | 2011-03-09 | 2011-03-09 | 12 |
| 14 | 2.6 | COM/HOTLINE: Notifier to END USER (through com_hub) tests complete | milestone | 0d | 2011-03-10 | 2011-03-10 | 4, 11, 13 |
| 15 | 2.7 | COM: Phone tree fully defined (structure and script contents) emily signs off |  | 1d | 2011-01-24 | 2011-01-24 |  |
| 16 | 2.8 | COM: Phone tree content recorded and uploaded to tree |  | 1d | 2011-01-25 | 2011-01-25 | 15 |
| 17 | 2.9 | COM: Communication arrangements completed for E1, SMS, GPRS x3, for production and ongoing test (contracts, payments, ongoing) |  | 1d | 2011-01-24 | 2011-01-24 |  |
| 18 | 2.10 | COM: Reports |  | 1d | 2011-03-11 | 2011-03-11 | 14 |
| 19 | 3 | **HOTLINE** |  | 11d | 2011-01-24 | 2011-02-07 |  |
| 20 | 3.1 | 18,"HOTLINE: Scheduler working for multiple clinics and web out XML ",3,"Week 6",, |  | 1d | 2011-01-24 | 2011-01-24 |  |
| 21 | 3.2 | 19,"HOTLINE: Rules engine (NOTIFIER) tips and alerts reads motech like XML, generates messages matching API ",,,, |  | 1d | 2011-01-24 | 2011-01-24 |  |
| 22 | 3.3 | HOTLINE: Full app functional at model/controller level with draft view (UI) |  | 1d | 2011-02-03 | 2011-02-03 | 3, 6 |
| 23 | 3.4 | HOTLINE: UI for H.S.A. User is FINALIZED |  | 1d | 2011-01-25 | 2011-01-25 | 20 |
| 24 | 3.5 | HOTLINE: exact printed script approved |  | 1d | 2011-01-24 | 2011-01-24 |  |
| 25 | 3.6 | HOTLINE: UI For admin finalized |  | 1d | 2011-01-24 | 2011-01-24 |  |
| 26 | 3.7 | HOTLINE: release candidate | milestone | 0d | 2011-02-04 | 2011-02-04 | 20, 21, 22, 23, 24 |
| 27 | 3.8 | HOTLINE: Admin reports ",24,,, |  | 1d | 2011-02-07 | 2011-02-07 | 26 |

| ID | WBS | Task | Type | Duration | Start | Finish | Predecessors |
| --- | --- | --- | --- | --- | --- | --- | --- |
| 28 | 4 | **HEALTH UNIT APP** |  | 56d | 2011-01-24 | 2011-04-11 |  |
| 29 | 4.1 | HEALTH UNIT APP: client browser downloads appointment schedule on J2+ |  | 10d | 2011-01-25 | 2011-02-07 | 20 |
| 30 | 4.2 | HEALTH UNIT APP: Schedule_reply (attendance record and upload) working in dev ",27,,, |  | 5d | 2011-02-08 | 2011-02-14 | 29 |
| 31 | 4.3 | HEALTH UNIT APP: Bar code read and print in dev |  | 5d | 2011-01-24 | 2011-01-28 |  |
| 32 | 4.4 | HEALTH UNIT APP: Other client features explored and decided (defines RC) |  | 1d | 2011-01-24 | 2011-01-24 |  |
| 33 | 4.5 | HEALTH UNIT APP: release candidate | milestone | 0d | 2011-04-11 | 2011-04-11 |  |
| 34 | 4.6 | HEALTH UNIT APP: Client other client features working @ test (include in RC?) ",,,, |  | 1d | 2011-01-24 | 2011-01-24 |  |
| 35 | 5 | **HARDWARE DEV** |  | 40d | 2011-01-24 | 2011-03-18 |  |
| 36 | 5.1 | HARDWARE: Determine deployment characteristics (e.g. power) |  | 4d | 2011-02-01 | 2011-02-04 | 4 |
| 37 | 5.2 | HARDWARE: Create server with GPRS solution – one permanently in test bed |  | 40d | 2011-01-24 | 2011-03-18 |  |
| 38 | 5.3 | HARDWARE: Create J2+ (J2 with GPRS) – one permanently in test bed (5 total?) |  | 40d | 2011-01-24 | 2011-03-18 |  |
| 39 | 6 | **HARDWARE DEPLOY** |  | 1d | 2011-01-24 | 2011-01-24 |  |
| 40 | 6.1 | HARDWARE: All hardware installed and tested at District Hospital (includes connection to BART primary DB) with GPRS connection functional |  | 1d | 2011-01-24 | 2011-01-24 |  |
| 41 | 6.2 | HARDWARE: All hardware installed and tested Health Units with GPRS connection functional |  | 1d | 2011-01-24 | 2011-01-24 |  |
| 42 | 7 | **TESTING** |  | 59d | 2011-01-24 | 2011-04-14 |  |
| 43 | 7.1 | TESTING: Design and agree on testbed protocol (dev team first, then deployment team) |  | 5d | 2011-01-31 | 2011-02-04 |  |
| 44 | 7.2 | TESTING: Establish a full test bed at Baobab Lilongwe office with hardware |  | 4d | 2011-03-21 | 2011-03-24 | 37, 38 |
| 45 | 7.3 | TESTING: Simulate live message sending over Telco/IVR/SMS in test bed (END TO END testing with DH server in testbed) |  | 3d | 2011-04-12 | 2011-04-14 | 26, 31, 32, 33, 34, 37, 38, 44 |
| 46 | 7.4 | TESTING: Repeat end to end testing in the field locations |  | 1d | 2011-01-24 | 2011-01-24 |  |
| 47 | 8 | **BART** |  | 2d | 2011-01-24 | 2011-01-25 |  |
| 48 | 8.1 | BART 2 stable for ART and ODP for Balaka District Deployment |  | 1d | 2011-01-24 | 2011-01-24 |  |
| 49 | 8.2 | BART: Bart2 is operational at District Hospital (as opposed to merely installed) ? |  | 1d | 2011-01-25 | 2011-01-25 | 48 |
| 50 | 9 | PRODUCTION: Go live date |  | 1d | 2011-01-24 | 2011-01-24 |  |
